# ESD 改版

Schedule from a web Gantt chart, 2025-10-28 to 2026-03-03.
Every day is a working day

## Schedule

| ID | WBS | Task | Duration | Start | Finish | Predecessors | Complete | Status |
| --- | --- | --- | --- | --- | --- | --- | --- | --- |
| 2 | 1 | Kickoff | 1d | 2025-10-28 | 2025-10-28 |  | 100% | done |
| 3 | 2 | Mask in | 19d | 2025-10-30 | 2025-11-17 |  | 100% | done |
| 4 | 3 | **Qual. lot** | 96d | 2025-11-19 | 2026-02-22 |  | 27% |  |
| 5 | 3.1 | WAFER PROCESS | 34d | 2025-11-19 | 2025-12-22 |  | 100% | done |
| 6 | 3.2 | PKG+FT | 48d | 2025-12-23 | 2026-02-08 |  |  |  |
| 7 | 3.3 | Bench test | 14d | 2026-02-09 | 2026-02-22 | 6 |  | waiting |
| 8 | 3.4 | RE168 | 14d | 2026-02-09 | 2026-02-22 | 6 |  | waiting |
| 9 | 3.5 | AE 验证 | 14d | 2026-02-09 | 2026-02-22 | 6 |  | waiting |
| 10 | 4 | RFS meeting | 9d | 2026-02-23 | 2026-03-03 | 8 |  | waiting |
